# Revamp room booking system

How a schedule from MS Project changed from version to version. A marks actual dates.

## Version 1 (data date 2022-10-18, saved 2022-11-16, file Project V1.mpp)

| ID | WBS | Task | Duration | Start | Finish | Predecessors | Complete | Total float | Constraint |
| --- | --- | --- | --- | --- | --- | --- | --- | --- | --- |
| 1 | 1 | **Planning Stage** | 2d | 2022-10-10 08:00 A | 2022-10-11 17:00 A |  | 100% |  |  |
| 2 |  | Pay office rental | 1d | 2022-10-10 08:00 A | 2022-10-10 17:00 A |  | 100% |  |  |
| 3 |  | Meeting 1 | 1d | 2022-10-10 08:00 A | 2022-10-10 17:00 A | 2SS | 100% |  |  |
| 4 |  | Fill up Kick Off Meeting Agenda | 1d | 2022-10-10 08:00 A | 2022-10-10 17:00 A | 3SS | 100% |  |  |
| 5 |  | Prepare Project charter | 1d | 2022-10-10 08:00 A | 2022-10-10 17:00 A | 3SS | 100% |  | finish no earlier than 2022-10-10 17:00 |
| 6 |  | Prepare Cost Estimate | 1d | 2022-10-10 08:00 A | 2022-10-10 17:00 A | 5SS | 100% |  |  |
| 7 |  | Prepare Scope Statement | 1d | 2022-10-10 08:00 A | 2022-10-10 17:00 A | 5SS | 100% |  |  |
| 8 |  | Prepare HR plan | 1d | 2022-10-10 08:00 A | 2022-10-10 17:00 A | 5SS | 100% |  |  |
| 9 |  | Prepare Organisational Chart | 1d | 2022-10-10 08:00 A | 2022-10-10 17:00 A | 5SS | 100% |  | start no earlier than 2022-10-10 08:00 |
| 10 |  | Prepare Team Contract | 1d | 2022-10-10 08:00 A | 2022-10-10 17:00 A | 5SS | 100% |  |  |
| 11 |  | Send Project Charter to CIO | 1d | 2022-10-11 08:00 A | 2022-10-11 17:00 A | 5, 9, 10 | 100% |  | finish no earlier than 2022-10-11 17:00 |
| 12 |  | Planning Completed | 0d | 2022-10-11 17:00 A | 2022-10-11 17:00 A | 11FS-1d | 100% |  | finish no earlier than 2022-10-11 17:00 |
| 13 | 2 | **Analysis Stage** | 5.5d | 2022-10-13 08:00 A | 2022-10-18 17:00 |  | 100% |  |  |
| 14 |  | Approach and Interview CIO | 1d | 2022-10-13 08:00 A | 2022-10-13 17:00 A |  | 100% |  |  |
| 15 |  | Meeting 2 | 1d | 2022-10-14 08:00 A | 2022-10-14 17:00 A | 14 | 100% |  | start no earlier than 2022-10-14 08:00 |
| 16 |  | Fill up Meeting Agenda for Meeting 2 | 0d | 2022-10-14 08:00 A | 2022-10-14 08:00 A | 15SS | 100% |  | start no earlier than 2022-10-14 08:00 |
| 17 |  | Fill up Project Milestone Report | 0.5d | 2022-10-17 08:00 A | 2022-10-17 12:00 A | 15 | 100% |  | start no earlier than 2022-10-17 08:00 |
| 18 |  | Gather requirements and fill up Requirements Traceability Matrix | 1d | 2022-10-17 08:00 A | 2022-10-17 17:00 A | 15 | 100% |  | finish no earlier than 2022-10-17 17:00 |
| 19 |  | Prepare MS Projects timeline | 1d | 2022-10-15 10:00 A | 2022-10-16 12:00 A | 15 | 100% |  |  |
| 20 |  | Prepare Cost Management Plan | 1d | 2022-10-15 10:00 A | 2022-10-16 12:00 A | 15 | 100% |  |  |
| 21 |  | Prepare Risk Management Plan | 0.5d | 2022-10-17 13:00 A | 2022-10-17 17:00 A | 15 | 100% |  | finish no earlier than 2022-10-17 17:00 |
| 22 |  | Analysis completed | 0d | 2022-10-17 08:00 A | 2022-10-17 08:00 A | 16FS-1d, 17FS-1d, 18FS-1d, 19FS-1d, 20FS-1d, 21FS-1d | 100% |  |  |
| 23 | 3 | **Design Stage** | 2d | 2022-10-19 08:00 A | 2022-10-20 17:00 A |  | 100% |  |  |
| 24 |  | Design backend (Pseudocode and flowchart) | 1d | 2022-10-19 08:00 A | 2022-10-19 17:00 A | 22 | 100% |  | start no earlier than 2022-10-19 08:00 |
| 25 |  | Design frontend (Wireframing) | 1d | 2022-10-20 08:00 A | 2022-10-20 17:00 A | 24 | 100% |  |  |
| 26 |  | Design completed | 0d | 2022-10-20 08:00 A | 2022-10-20 08:00 A | 25FS-1d, 24FS-1d | 100% |  |  |
| 27 | 4 | **Development Stage** | 15d | 2022-10-21 08:00 A | 2022-11-08 17:00 |  | 26% |  |  |
| 28 |  | Fill up Project Milestone Report | 0.5d | 2022-10-21 08:00 A | 2022-10-21 12:00 A | 26 | 100% |  | start no earlier than 2022-10-21 08:00 |
| 29 |  | Program Backend | 12d | 2022-10-22 10:00 A | 2022-11-06 15:00 | 26 | 25% | 9d | start no earlier than 2022-10-22 08:00 |
| 30 |  | Program Frontend | 12d | 2022-10-22 10:00 A | 2022-11-06 15:00 | 29SS | 25% | 9d | start no earlier than 2022-10-22 08:00 |
| 31 |  | Fill up Project Milestone Report | 0.5d | 2022-11-04 08:00 | 2022-11-04 12:00 |  |  |  | start no earlier than 2022-11-04 08:00 |
| 32 |  | Program completed | 0d | 2022-11-08 17:00 | 2022-11-08 17:00 | 26 |  | 1.25d | finish no earlier than 2022-11-08 17:00 |
| 33 | 5 | **Testing Stage** | 2d | 2022-11-09 08:00 | 2022-11-10 17:00 |  |  |  |  |
| 34 |  | Discuss Testing plans | 1d | 2022-11-09 08:00 | 2022-11-09 17:00 | 32 |  | 1.25d |  |
| 35 |  | Write up Test Cases | 1d | 2022-11-09 08:00 | 2022-11-09 17:00 | 34SS |  | 1.25d |  |
| 36 |  | Run Test cases | 0.5d | 2022-11-10 13:00 | 2022-11-10 17:00 | 35 |  | 0.75d | finish no earlier than 2022-11-10 17:00 |
| 37 |  | Fill in Test report | 0.5d | 2022-11-10 13:00 | 2022-11-10 17:00 | 36SS |  | 5d | start no earlier than 2022-11-10 08:00 |
| 38 |  | Testing completed | 0d | 2022-11-10 08:00 | 2022-11-10 08:00 | 36FS-1d |  | 0.75d | start no earlier than 2022-11-10 08:00 |
| 39 | 6 | **Preparation Stage** | 5.75d | 2022-11-10 08:00 | 2022-11-16 15:00 |  |  |  |  |
| 40 |  | Fill up Project Milestone Report | 0.5d | 2022-11-11 08:00 | 2022-11-11 12:00 | 38 |  |  | start no earlier than 2022-11-11 08:00 |
| 41 |  | Prepare video | 4d | 2022-11-10 08:00 | 2022-11-14 17:00 | 38FS-2.5% |  | 0.75d | finish no earlier than 2022-11-14 17:00 |
| 42 |  | Meeting 3 | 1d | 2022-11-15 08:00 | 2022-11-15 17:00 | 41 |  | 0.75d |  |
| 43 |  | Fill up Meeting Agenda for Meeting 3 | 0d | 2022-11-15 08:00 | 2022-11-15 08:00 | 42SS |  | 2d |  |
| 44 |  | Complete Team and personal Lesson Learnt Report | 0d | 2022-11-15 08:00 | 2022-11-15 08:00 | 42SS |  | 1.5d |  |
| 45 |  | Fill up Project Milestone Report | 0.5d | 2022-11-16 08:00 | 2022-11-16 12:00 | 44 |  |  | start no earlier than 2022-11-16 08:00 |
| 46 |  | Final look-through | 0.5d | 2022-11-16 08:00 | 2022-11-16 12:00 | 42FS-2.5% |  | 0.5d | start no earlier than 2022-11-16 08:00 |
| 47 |  | Submission | 0d | 2022-11-16 12:00 | 2022-11-16 12:00 | 46, 54, 60, 45, 65 |  | 0.5d | start no earlier than 2022-11-16 08:00 |
| 48 | 7 | **Fill in Progress Report** | 27d | 2022-10-16 08:00 | 2022-11-16 17:00 |  |  |  |  |
| 49 |  | Fill in Progress Report 1 | 0.5d | 2022-10-16 08:00 | 2022-10-16 12:00 | 15 |  | 24d | start no earlier than 2022-10-16 08:00 |
| 50 |  | Fill in Progress Report 2 | 0.5d | 2022-10-23 10:00 | 2022-10-23 17:00 | 49 |  | 18d | finish no earlier than 2022-10-23 17:00 |
| 51 |  | Fill in Progress Report 3 | 0.5d | 2022-10-30 10:00 | 2022-10-30 15:00 | 50 |  | 13.5d | start no earlier than 2022-10-30 08:00 |
| 52 |  | Fill in Progress Report 4 | 0.5d | 2022-11-06 10:00 | 2022-11-06 17:00 | 51 |  | 8d | finish no earlier than 2022-11-06 17:00 |
| 53 |  | Fill in Progress Report 5 | 0.5d | 2022-11-13 10:00 | 2022-11-13 17:00 | 52 |  | 2.5d | finish no earlier than 2022-11-13 17:00 |
| 54 |  | Fill in Progress Report 6 | 0.5d | 2022-11-16 08:00 | 2022-11-16 12:00 | 53 |  | 0.5d | start no earlier than 2022-11-16 08:00 |
| 55 | 8 | **Fill in Risk Register** | 25d | 2022-10-11 08:00 | 2022-11-09 12:00 |  |  | 6.5d |  |
| 56 |  | Fill in Risk Register 1 | 0.5d | 2022-10-11 08:00 | 2022-10-11 12:00 | 2SS |  | 29d | start no earlier than 2022-10-11 08:00 |
| 57 |  | Fill in Risk Register 2 | 0.5d | 2022-10-17 08:00 | 2022-10-17 12:00 | 56 |  | 24d | start no earlier than 2022-10-17 08:00 |
| 58 |  | Fill in Risk Register 3 | 0.5d | 2022-10-25 08:00 | 2022-10-25 12:00 | 57 |  | 18.5d | start no earlier than 2022-10-25 08:00 |
| 59 |  | Fill in Risk Register 4 | 0.5d | 2022-10-31 08:00 | 2022-10-31 12:00 | 58 |  | 14d | start no earlier than 2022-10-31 08:00 |
| 60 |  | Fill in Risk Register 5 | 0.5d | 2022-11-09 08:00 | 2022-11-09 12:00 | 59 |  | 6.5d | start no earlier than 2022-11-09 08:00 |
| 61 | 9 | **Update Cost Baseline** | 24d | 2022-10-15 10:00 | 2022-11-12 15:00 |  |  | 3.5d |  |
| 62 |  | Update Cost Baseline 1 | 0.5d | 2022-10-15 10:00 | 2022-10-15 15:00 | 6 |  | 25d | start no earlier than 2022-10-15 08:00 |
| 63 |  | Update Cost Baseline 2 | 0.5d | 2022-10-22 10:00 | 2022-10-22 15:00 | 62 |  | 19d | start no earlier than 2022-10-22 08:00 |
| 64 |  | Update Cost Baseline 3 | 0.5d | 2022-10-29 10:00 | 2022-10-29 15:00 | 63 |  | 14.5d | start no earlier than 2022-10-29 08:00 |
| 65 |  | Update Cost Baseline 4 | 0.5d | 2022-11-05 10:00 | 2022-11-05 15:00 | 64 |  | 9d | start no earlier than 2022-11-05 08:00 |
| 66 |  | Update Cost Baseline 5 | 0.5d | 2022-11-12 10:00 | 2022-11-12 15:00 | 65 |  | 3.5d | start no earlier than 2022-11-12 08:00 |

## Version 2 (data date 2022-10-18, saved 2022-11-16, file Project v2.mpp)

Last finish stays 2022-11-16. Complete tasks 24 → 70.

Added:

| ID | Task | Duration | Start | Finish | Predecessors | Constraint | Resources |
| --- | --- | --- | --- | --- | --- | --- | --- |
| 33 | **Change Request** | 6d | 2022-10-25 08:00 A | 2022-10-31 17:00 |  |  |  |
| 34 | Change Request received | 0d | 2022-10-25 08:00 A | 2022-10-25 08:00 A |  |  | Bin Hui; Debra; Dominic; Jasmine; Theophilus; Tsun Hong |
| 37 | Complete Change Request Form | 0d | 2022-10-25 08:00 A | 2022-10-25 08:00 A | 35SS |  | Bin Hui; Debra; Dominic; Jasmine; Theophilus; Tsun Hong |
| 38 | Submit Change Request Form to CIO | 1d | 2022-10-25 08:00 A | 2022-10-25 17:00 A | 37 |  | Theophilus |
| 39 | Update Requirements Traceability Matrix | 2d | 2022-10-26 08:00 A | 2022-10-27 17:00 A | 38 |  | Theophilus |
| 40 | Update HR Plan | 0.5d | 2022-10-26 08:00 A | 2022-10-26 12:00 A | 38 |  | Debra |
| 41 | Update Scope Statement | 1d | 2022-10-27 08:00 A | 2022-10-27 17:00 A | 38 | start no earlier than 2022-10-27 08:00 | Debra |
| 42 | Update Cost Baseline to include change request | 2d | 2022-10-26 08:00 A | 2022-10-27 17:00 A | 38 |  | Tsun Hong |
| 43 | Update Project Schedule | 0.5d | 2022-10-26 08:00 A | 2022-10-26 12:00 A | 38 |  | Bin Hui |
| 44 | Fill up and update Project Milestone Report | 1d | 2022-10-28 08:00 A | 2022-10-28 17:00 A | 38 | start no earlier than 2022-10-28 08:00 | Jasmine [20%]; Debra |
| 45 | Update Risk Register to include change request | 2d | 2022-10-28 08:00 A | 2022-10-30 15:00 A | 38 | start no earlier than 2022-10-28 08:00 | Dominic |
| 46 | Change Request updates completed | 0d | 2022-10-31 08:00 A | 2022-10-31 08:00 A | 39FS-1d, 42FS-1d, 43FS-1d, 45FS-1d | start no earlier than 2022-10-28 08:00 | Bin Hui; Debra; Dominic; Jasmine; Theophilus; Tsun Hong |
| 56 | Meeting 4 | 1d | 2022-11-15 08:00 A | 2022-11-15 17:00 A | 55 |  | Bin Hui; Debra; Dominic; Jasmine; Theophilus; Tsun Hong |
| 57 | Fill up Meeting Agenda for Meeting 4 | 0d | 2022-11-15 08:00 A | 2022-11-15 08:00 A | 56SS |  | Dominic |

Changed:

| ID | Task | Start | Finish | Complete | Total float | Predecessors | Other |
| --- | --- | --- | --- | --- | --- | --- | --- |
| 27 | **Development Stage** |  | 2022-11-08 17:00 A | 26% → 100% |  |  |  |
| 29 | Program Backend |  | 2022-11-06 15:00 → 2022-11-07 17:00 A (+1d) | 25% → 100% | 9d → none |  |  |
| 30 | Program Frontend |  | 2022-11-06 15:00 → 2022-11-07 17:00 A (+1d) | 25% → 100% | 9d → none |  | constraint start no earlier than 2022-10-22 08:00 → finish no earlier than 2022-11-07 17:00 |
| 31 | Fill up Project Milestone Report | 2022-11-04 08:00 A | 2022-11-04 12:00 A | 0% → 100% |  | none → 46 |  |
| 32 | Program completed | 2022-11-08 17:00 A | 2022-11-08 17:00 A | 0% → 100% | 1.25d → none | 26 → 46FS-1d |  |
| 35 | Meeting 3 | 2022-11-15 08:00 → 2022-10-25 08:00 A (-21d) | 2022-11-15 17:00 → 2022-10-25 17:00 A (-21d) | 0% → 100% | 0.75d → none | 55 → 34 | resources Bin Hui; Debra; Dominic; Jasmine; Theophilus; Tsun Hong → Bin Hui [10%]; Debra; Dominic [50%]; Jasmine [10%]; Theophilus [50%]; Tsun Hong |
| 36 | Fill up Meeting Agenda for Meeting 3 | 2022-11-15 08:00 → 2022-10-25 08:00 A (-21d) | 2022-11-15 08:00 → 2022-10-25 08:00 A (-21d) | 0% → 100% | 2d → none |  |  |
| 47 | **Testing Stage** | 2022-11-09 08:00 A | 2022-11-10 17:00 A | 0% → 100% |  |  |  |
| 48 | Discuss Testing plans | 2022-11-09 08:00 A | 2022-11-09 17:00 A | 0% → 100% | 1.25d → none |  |  |
| 49 | Write up Test Cases | 2022-11-09 08:00 A | 2022-11-09 17:00 A | 0% → 100% | 1.25d → none |  |  |
| 50 | Run Test cases | 2022-11-10 13:00 A | 2022-11-10 17:00 A | 0% → 100% | 0.75d → none |  |  |
| 51 | Fill in Test report | 2022-11-10 13:00 A | 2022-11-10 17:00 A | 0% → 100% | 5d → none |  |  |
| 52 | Testing completed | 2022-11-10 08:00 A | 2022-11-10 08:00 A | 0% → 100% | 0.75d → none |  |  |
| 53 | **Preparation Stage** | 2022-11-10 08:00 A |  | 0% → 100% |  |  |  |
| 54 | Fill up Project Milestone Report | 2022-11-11 08:00 A | 2022-11-11 12:00 A | 0% → 100% |  |  |  |
| 55 | Prepare video | 2022-11-10 08:00 A | 2022-11-14 17:00 A | 0% → 100% | 0.75d → none |  |  |
| 58 | Complete Team and personal Lesson Learnt Report | 2022-11-15 08:00 A | 2022-11-15 08:00 A | 0% → 100% | 1.5d → none | 35SS → 56SS |  |
| 59 | Fill up Project Milestone Report | 2022-11-16 08:00 A | 2022-11-16 12:00 A | 0% → 100% |  |  |  |
| 60 | Final look-through | 2022-11-16 08:00 A | 2022-11-16 12:00 A | 0% → 100% | 0.5d → none | 35FS-2.5% → 56FS-2.5% |  |
| 61 | Submission | 2022-11-16 12:00 A | 2022-11-16 12:00 A | 0% → 100% | 0.5d → none |  |  |
| 62 | **Fill in Progress Report** | 2022-10-16 08:00 A |  | 0% → 100% |  |  |  |
| 63 | Fill in Progress Report 1 | 2022-10-16 08:00 A | 2022-10-16 12:00 A | 0% → 100% | 24d → none |  |  |
| 64 | Fill in Progress Report 2 | 2022-10-23 10:00 A | 2022-10-23 17:00 A | 0% → 100% | 18d → none |  |  |
| 65 | Fill in Progress Report 3 | 2022-10-30 10:00 A | 2022-10-30 15:00 A | 0% → 100% | 13.5d → none |  |  |
| 66 | Fill in Progress Report 4 | 2022-11-06 10:00 A | 2022-11-06 17:00 A | 0% → 100% | 8d → none |  |  |
| 67 | Fill in Progress Report 5 | 2022-11-13 10:00 A | 2022-11-13 17:00 A | 0% → 100% | 2.5d → none |  |  |
| 68 | Fill in Progress Report 6 | 2022-11-16 08:00 A | 2022-11-16 12:00 A | 0% → 100% | 0.5d → none |  |  |
| 69 | **Fill in Risk Register** | 2022-10-11 08:00 A | 2022-11-09 12:00 A | 0% → 100% | 6.5d → none |  |  |
| 70 | Fill in Risk Register 1 | 2022-10-11 08:00 A | 2022-10-11 12:00 A | 0% → 100% | 29d → none |  |  |
| 71 | Fill in Risk Register 2 | 2022-10-17 08:00 A | 2022-10-17 12:00 A | 0% → 100% | 24d → none |  |  |
| 72 | Fill in Risk Register 3 | 2022-10-25 08:00 A | 2022-10-25 12:00 A | 0% → 100% | 18.5d → none |  |  |
| 73 | Fill in Risk Register 4 | 2022-10-31 08:00 A | 2022-10-31 12:00 A | 0% → 100% | 14d → none |  |  |
| 74 | Fill in Risk Register 5 | 2022-11-09 08:00 A | 2022-11-09 12:00 A | 0% → 100% | 6.5d → none |  |  |
| 75 | **Update Cost Baseline** | 2022-10-15 10:00 A | 2022-11-12 15:00 A | 0% → 100% | 3.5d → none |  |  |
| 76 | Update Cost Baseline | 2022-10-15 10:00 A | 2022-10-15 15:00 A | 0% → 100% | 25d → none |  | was named Update Cost Baseline 1 |
| 77 | Update Cost Baseline | 2022-10-22 10:00 A | 2022-10-22 15:00 A | 0% → 100% | 19d → none |  | was named Update Cost Baseline 2 |
| 78 | Update Cost Baseline | 2022-10-29 10:00 A | 2022-10-29 15:00 A | 0% → 100% | 14.5d → none |  | was named Update Cost Baseline 3 |
| 79 | Update Cost Baseline | 2022-11-05 10:00 A | 2022-11-05 15:00 A | 0% → 100% | 9d → none |  | was named Update Cost Baseline 4 |
| 80 | Update Cost Baseline | 2022-11-12 10:00 A | 2022-11-12 15:00 A | 0% → 100% | 3.5d → none |  | was named Update Cost Baseline 5 |
